# ECG Time Series Analysis and Static Web Demo

How a schedule from MS Project XML changed from version to version. A marks actual dates.

## Version 1 (saved 2026-11-16)

Note of the change: Rework

| ID | WBS | Task | Duration | Start | Finish | Predecessors |
| --- | --- | --- | --- | --- | --- | --- |
| 1 | 1 | **Phase 1: Initiation and integrated planning** | 5d | 2026-10-01 | 2026-10-07 |  |
| 2 |  | Project charter, scope and acceptance criteria | 2d | 2026-10-01 | 2026-10-02 |  |
| 3 |  | Integrated WBS, schedule and resource plan | 2d | 2026-10-05 | 2026-10-06 | 2 |
| 4 |  | Quality, risk and communication baseline with plan review | 1d | 2026-10-07 | 2026-10-07 | 3 |
| 5 | 2 | **Phase 2: ECG data foundation** | 10d | 2026-10-08 | 2026-10-21 |  |
| 6 |  | MIT-BIH inventory and ECG exploration baseline | 4d | 2026-10-08 | 2026-10-13 | 4 |
| 7 |  | Preprocessed ECG and HR/RR dataset with data review | 6d | 2026-10-14 | 2026-10-21 | 6 |
| 8 | 3 | **Phase 3: Analysis and model evidence** | 10d | 2026-10-22 | 2026-11-04 |  |
| 9 |  | ARIMA/SARIMA forecasting results | 8d | 2026-10-22 | 2026-11-02 | 7 |
| 10 |  | ML/CNN classification results | 9d | 2026-10-22 | 2026-11-03 | 7 |
| 11 |  | ST-MEM evaluation and combined model review | 10d | 2026-10-22 | 2026-11-04 | 7 |
| 12 | 4 | **Phase 4: Static web demo** | 10d | 2026-11-05 | 2026-11-18 |  |
| 13 |  | Static analysis pages and prepared demo data | 6d | 2026-11-05 | 2026-11-12 | 9, 10, 11 |
| 14 |  | ECG replay monitor, integration and demo review | 4d | 2026-11-13 | 2026-11-18 | 13 |
| 15 | 5 | **Phase 5: Verification and final report** | 10d | 2026-11-19 | 2026-12-02 |  |
| 16 |  | Verification evidence and issue resolution | 6d | 2026-11-19 | 2026-11-26 | 14 |
| 17 |  | Final project report, user guide and quality review | 4d | 2026-11-27 | 2026-12-02 | 16 |
| 18 | 6 | **Phase 6: Acceptance and handover** | 5d | 2026-12-03 | 2026-12-09 |  |
| 19 |  | User acceptance and final corrections | 3d | 2026-12-03 | 2026-12-07 | 17 |
| 20 |  | Handover package, retrospective and final acceptance | 2d | 2026-12-08 | 2026-12-09 | 19 |

## Version 2 (saved 2026-11-17)

Note of the change: add

Last finish stays 2026-12-09.

Added:

| ID | Task | Duration | Start | Finish | Predecessors |
| --- | --- | --- | --- | --- | --- |
| 5 | M1: Integrated project plan gate | 0d | 2026-10-07 | 2026-10-07 | 4 |
| 9 | M2: ECG data readiness gate | 0d | 2026-10-21 | 2026-10-21 | 8 |
| 14 | M3: Model evidence review gate | 0d | 2026-11-04 | 2026-11-04 | 11, 12, 13 |
| 18 | M4: Static demo review gate | 0d | 2026-11-18 | 2026-11-18 | 17 |
| 22 | M5: QA and report review gate | 0d | 2026-12-02 | 2026-12-02 | 21 |
| 26 | M6: Final acceptance and handover gate | 0d | 2026-12-09 | 2026-12-09 | 25 |

Changed:

| ID | Task | Total float | Predecessors | Other |
| --- | --- | --- | --- | --- |
| 1 | **Phase 1: Initiation and integrated planning** | none → 0d |  | baseline start none → 2026-10-01; baseline finish none → 2026-10-07 |
| 2 | Project charter, scope and acceptance criteria | none → 0d |  | baseline start none → 2026-10-01; baseline finish none → 2026-10-02 |
| 3 | Integrated WBS, schedule and resource plan | none → 0d |  | baseline start none → 2026-10-05; baseline finish none → 2026-10-06 |
| 4 | Quality, risk and communication baseline with plan review | none → 0d |  | baseline start none → 2026-10-07; baseline finish none → 2026-10-07 |
| 6 | **Phase 2: ECG data foundation** | none → 0d |  | baseline start none → 2026-10-08; baseline finish none → 2026-10-21 |
| 7 | MIT-BIH inventory and ECG exploration baseline | none → 0d | 4 → 5 | baseline start none → 2026-10-08; baseline finish none → 2026-10-13 |
| 8 | Preprocessed ECG and HR/RR dataset with data review | none → 0d |  | resources Vũ Quốc Huy [33.33%]; Trần Tuấn Anh [12.5%]; Mai Tuấn Mạnh [8.33%]; Nguyễn Quang Huy [8.33%]; Storage and demo infrastructure (estimate) → Vũ Quốc Huy [33.33%]; Trần Tuấn Anh [12.5%]; Mai Tuấn Mạnh [8.33%]; Nguyễn Quang Huy [8.33%]; baseline start none → 2026-10-14; baseline finish none → 2026-10-21 |
| 10 | **Phase 3: Analysis and model evidence** | none → 0d |  | baseline start none → 2026-10-22; baseline finish none → 2026-11-04 |
| 11 | ARIMA/SARIMA forecasting results | none → 2d | 8 → 9 | baseline start none → 2026-10-22; baseline finish none → 2026-11-02 |
| 12 | ML/CNN classification results | none → 1d | 8 → 9 | resources Mai Tuấn Mạnh [44.44%]; Vũ Quốc Huy [5.56%]; Hoàng Thị Ngọc Hân [5.56%]; GPU compute provision (estimate) → Mai Tuấn Mạnh [44.44%]; Vũ Quốc Huy [5.56%]; Hoàng Thị Ngọc Hân [5.56%]; baseline start none → 2026-10-22; baseline finish none → 2026-11-03 |
| 13 | ST-MEM evaluation and combined model review | none → 0d | 8 → 9 | resources Nguyễn Quang Huy [43.75%]; Mai Tuấn Mạnh [3.75%]; Hoàng Thị Ngọc Hân [2.5%]; GPU compute provision (estimate) → Nguyễn Quang Huy [43.75%]; Mai Tuấn Mạnh [3.75%]; Hoàng Thị Ngọc Hân [2.5%]; baseline start none → 2026-10-22; baseline finish none → 2026-11-04 |
| 15 | **Phase 4: Static web demo** | none → 0d |  | baseline start none → 2026-11-05; baseline finish none → 2026-11-18 |
| 16 | Static analysis pages and prepared demo data | none → 0d | 11, 12, 13 → 14 | resources Hoàng Thị Ngọc Hân [45.83%]; Nguyễn Tuấn Anh [8.33%]; Trần Tuấn Anh [4.17%]; Mai Tuấn Mạnh [4.17%]; Nguyễn Quang Huy [4.17%]; Storage and demo infrastructure (estimate) → Hoàng Thị Ngọc Hân [45.83%]; Nguyễn Tuấn Anh [8.33%]; Trần Tuấn Anh [4.17%]; Mai Tuấn Mạnh [4.17%]; Nguyễn Quang Huy [4.17%]; baseline start none → 2026-11-05; baseline finish none → 2026-11-12 |
| 17 | ECG replay monitor, integration and demo review | none → 0d |  | baseline start none → 2026-11-13; baseline finish none → 2026-11-18 |
| 19 | **Phase 5: Verification and final report** | none → 0d |  | baseline start none → 2026-11-19; baseline finish none → 2026-12-02 |
| 20 | Verification evidence and issue resolution | none → 0d | 17 → 18 | baseline start none → 2026-11-19; baseline finish none → 2026-11-26 |
| 21 | Final project report, user guide and quality review | none → 0d |  | baseline start none → 2026-11-27; baseline finish none → 2026-12-02 |
| 23 | **Phase 6: Acceptance and handover** | none → 0d |  | baseline start none → 2026-12-03; baseline finish none → 2026-12-09 |
| 24 | User acceptance and final corrections | none → 0d | 21 → 22 | baseline start none → 2026-12-03; baseline finish none → 2026-12-07 |
| 25 | Handover package, retrospective and final acceptance | none → 0d |  | resources Nguyễn Tuấn Anh [12.5%]; Trần Tuấn Anh [12.5%]; Storage and demo infrastructure (estimate) → Nguyễn Tuấn Anh [12.5%]; Trần Tuấn Anh [12.5%]; baseline start none → 2026-12-08; baseline finish none → 2026-12-09 |
